# 兰州市融媒体中心建设项目（第一包）

Schedule from a web Gantt chart, 2026-09-11 to 2026-12-11.
Saturdays and Sundays are off

## Schedule

| ID | WBS | Task | Duration | Start | Finish |
| --- | --- | --- | --- | --- | --- |
| 2 | 1 | **项目启动与计划管控** | 3d | 2026-09-11 | 2026-09-15 |
| 3 | 1.1 | 内部启动分工会议 | 1d | 2026-09-11 | 2026-09-11 |
| 4 | 1.2 | 外部启动协调会议 | 1d | 2026-09-14 | 2026-09-14 |
| 5 | 1.3 | 项目实施计划输出 | 1d | 2026-09-14 | 2026-09-14 |
| 6 | 1.4 | 现场实施环境调研 | 1d | 2026-09-15 | 2026-09-15 |
| 7 | 2 | **环境与基础资源准备** | 1d | 2026-09-15 | 2026-09-15 |
| 8 | 2.1 | 云资源及堡垒机申请 | 3d | 2026-09-15 | 2026-09-17 |
| 9 | 2.2 | 国产化软件采购申请 | 1d | 2026-09-15 | 2026-09-15 |
| 10 | 2.3 | 系统环境基础化配置 | 1d | 2026-09-16 | 2026-09-16 |
| 11 | 2.4 | 人大金仓数据库安装 | 1d | 2026-09-17 | 2026-09-17 |
| 12 | 2.5 | 高斯海量数据库安装 | 1d | 2026-09-17 | 2026-09-17 |
| 13 | 2.6 | 部署k8sPaaS云平台 | 3d | 2026-09-17 | 2026-09-21 |
| 15 | 2.7 | 云雀融媒体后台部署 | 1d | 2026-09-21 | 2026-09-21 |
| 16 | 2.8 | 与东方盛行转码对接 | 3d | 2026-09-22 | 2026-09-24 |
| 17 | 2.9 | 组织机构与权限录入 | 1d | 2026-09-24 | 2026-09-24 |
| 18 | 2.10 | 稿库与编审流程调研 | 3d | 2026-10-08 | 2026-10-12 |
| 19 | 2.11 | 融媒业务流程调研 | 1d | 2026-10-08 | 2026-10-08 |
| 20 | 3 | 第一阶段：国庆节前攻坚（9月14日-9月30日） | 1d | 2026-09-15 | 2026-09-15 |
| 21 | 4 | **大屏可视化系统实施** | 28d | 2026-09-16 | 2026-10-23 |
| 22 | 4.1 | 大屏需求与信源清单确认 | 1d | 2026-09-16 | 2026-09-16 |
| 23 | 4.2 | 大屏尺寸确认与模板选型 | 2d | 2026-09-17 | 2026-09-18 |
| 24 | 4.3 | 大屏原型设计与最终确认 | 1d | 2026-09-21 | 2026-09-21 |
| 25 | 4.4 | 大屏数据接入开发及研判 | 3d | 2026-09-22 | 2026-09-24 |
| 26 | 4.5 | 大屏个性化样式进行开发 | 7d | 2026-10-08 | 2026-10-16 |
| 27 | 4.6 | 融媒体信源清单信息提供 | 2d | 2026-10-19 | 2026-10-20 |
| 28 | 4.7 | 大屏提供初版效果及演示 | 1d | 2026-10-21 | 2026-10-21 |
| 29 | 4.8 | 大屏数据校准与内容联调 | 1d | 2026-10-22 | 2026-10-22 |
| 30 | 4.9 | 大屏正式版交付 | 1d | 2026-10-23 | 2026-10-23 |

Notes:
- 20: 第一阶段：国庆节前攻坚（9月14日-9月30日）
- 21: 国庆节后提供融媒信源

| ID | WBS | Task | Duration | Start | Finish |
| --- | --- | --- | --- | --- | --- |
| 31 | 5 | **系统能力提供及接入** | 12d | 2026-10-08 | 2026-10-23 |
| 32 | 5.1 | AIGC与智能能力开通 | 3d | 2026-10-09 | 2026-10-13 |
| 33 | 5.2 | 智能审校服务配置 | 1d | 2026-10-13 | 2026-10-13 |
| 34 | 5.3 | 监测信源信息提供 | 2d | 2026-10-08 | 2026-10-09 |
| 35 | 5.4 | 一键转载到云雀系统 | 10d | 2026-10-12 | 2026-10-23 |
| 36 | 6 | **融媒业务贯通及汇聚** | 32d | 2026-09-15 | 2026-10-28 |
| 37 | 6.1 | 横向打通省市级媒体方案分析 | 1d | 2026-09-15 | 2026-09-15 |
| 38 | 6.2 | 横向打通省市级媒体方案确认 | 9d | 2026-09-18 | 2026-09-30 |
| 39 | 6.3 | 纵向贯通区县级媒体方案分析 | 4d | 2026-09-18 | 2026-09-23 |
| 40 | 6.4 | 纵向贯通区县级媒体方案确认 | 5d | 2026-09-24 | 2026-09-30 |
| 41 | 6.5 | 省市级媒体方案进入开发周期 | 10d | 2026-10-08 | 2026-10-21 |
| 42 | 6.6 | 区县级媒体方案进入开发周期 | 10d | 2026-10-08 | 2026-10-21 |
| 43 | 6.7 | 融媒稿件汇聚贯通全流程测试 | 5d | 2026-10-22 | 2026-10-28 |
| 44 | 7 | 第二阶段：国庆节后至记者节（10月8日-11月8日） | 1d | 2026-10-22 | 2026-10-22 |
| 45 | 8 | **纸媒与电子报刊实施** | 17d | 2026-10-29 | 2026-11-20 |
| 46 | 8.1 | 采编业务流程调研 | 2d | 2026-10-29 | 2026-10-30 |
| 47 | 8.2 | 数字报模板确认 | 1d | 2026-11-09 | 2026-11-09 |
| 48 | 8.3 | 报纸模块参数配置 | 2d | 2026-11-09 | 2026-11-10 |
| 49 | 8.4 | 稿库编审流程配置 | 3d | 2026-11-11 | 2026-11-13 |
| 50 | 8.5 | 排版工具升级部署 | 1d | 2026-11-16 | 2026-11-16 |
| 51 | 8.6 | 反解标引工具部署 | 1d | 2026-11-17 | 2026-11-17 |
| 52 | 8.7 | DMS工具升级测试 | 1d | 2026-11-17 | 2026-11-17 |
| 53 | 8.8 | 新华供稿地址对接 | 1d | 2026-11-18 | 2026-11-18 |
| 54 | 8.9 | 纸媒全流程测试 | 1d | 2026-11-19 | 2026-11-19 |
| 55 | 8.10 | 数字报模板制作 | 8d | 2026-11-10 | 2026-11-19 |
| 56 | 8.11 | 数字报流程测试 | 1d | 2026-11-19 | 2026-11-19 |
| 57 | 8.12 | 纸媒模块使用培训 | 1d | 2026-11-19 | 2026-11-19 |
| 58 | 8.13 | 纸媒/数字报切换 | 1d | 2026-11-20 | 2026-11-20 |

Notes:
- 44: 第二阶段：国庆节后至记者节（10月8日-11月8日）

| ID | WBS | Task | Duration | Start | Finish |
| --- | --- | --- | --- | --- | --- |
| 59 | 9 | **报纸历史数据迁移** | 1d | 2026-09-11 | 2026-09-11 |
| 60 | 9.1 | 数据迁移方案编制 | 1d | 2026-09-11 | 2026-09-11 |
| 61 | 9.2 | 迁移环境与工具准备 | 1d | 2026-09-11 | 2026-09-11 |
| 62 | 9.3 | 历史数据迁移执行 | 1d | 2026-09-11 | 2026-09-11 |
| 63 | 9.4 | 迁移数据重新发布 | 1d | 2026-09-11 | 2026-09-11 |
| 64 | 10 | **资料整理与项目验收** | 20d | 2026-11-16 | 2026-12-11 |
| 65 | 10.1 | 验收资料整理 | 11d | 2026-11-16 | 2026-11-30 |
| 66 | 10.2 | 系统管理员培训 | 1d | 2026-11-30 | 2026-11-30 |
| 67 | 10.3 | 配合软件测评 | 10d | 2026-11-30 | 2026-12-11 |
| 68 | 10.4 | 项目组织验收 | 1d | 2026-12-04 | 2026-12-04 |
| 69 | 11 | 第三阶段：记者节后至验收（11月9日-12月15日） | 1d | 2026-09-11 | 2026-09-11 |

Notes:
- 69: 第三阶段：记者节后至验收（11月9日-12月15日）
